Schedule from GanttProject, 2013-04-01 to 2013-06-20.

## Calendars

- Project calendar: Mon-Fri working; Sat-Sun off.

## Resources

| Resource |
| --- |
| Björn Endres (SYSTOPIA) |
| Paul Delbar (delius) |
| Olaf Buddenhagen (SfE) |
| Xavier Dutoit |
| Joe Murray (JMA Consulting) |

## Schedule

| ID | WBS | Task | Duration | Start | Finish | Predecessors | Complete | Resources |
| --- | --- | --- | --- | --- | --- | --- | --- | --- |
| 1 | 1 | **Data Model** | 28d | 2013-04-01 | 2013-05-08 |  | 68% |  |
| 2 | 1.1 | data model working version 1 | 23d | 2013-04-01 | 2013-05-01 |  | 70% | Paul Delbar (delius) |
| 3 | 1.2 | XML & DAO generation SEPA | 5d | 2013-05-02 | 2013-05-08 | 2 | 80% | Paul Delbar (delius) |
| 4 | 1.3 | XML & DAO generation CiviBanking | 3d | 2013-05-02 | 2013-05-06 | 2 |  | Björn Endres (SYSTOPIA) |
| 5 | 2 | **API / Interfaces** | 16d | 2013-05-06 | 2013-05-27 |  |  |  |
| 6 | 2.1 | accounts API | 3d | 2013-05-23 | 2013-05-27 | 3 |  | Björn Endres (SYSTOPIA); Xavier Dutoit |
| 7 | 2.2 | payments / statements API | 1d | 2013-05-23 | 2013-05-23 | 3 |  | Björn Endres (SYSTOPIA); Xavier Dutoit |
| 8 | 2.3 | SEPA API? (mandates, transactions, modes...) | 1d | 2013-05-23 | 2013-05-23 | 3 |  | Olaf Buddenhagen (SfE) |
| 9 | 2.4 | import / export plugin interfaces | 5d | 2013-05-06 | 2013-05-10 |  |  | Björn Endres (SYSTOPIA) |
| 10 | 2.5 | matcher plugin interfaces | 5d | 2013-05-06 | 2013-05-10 |  |  | Björn Endres (SYSTOPIA) |
| 11 | 3 | **CiviBanking** | 59d | 2013-04-01 | 2013-06-20 |  | 12% |  |
| 12 | 3.1 | design mockups | 12d | 2013-04-01 | 2013-04-16 |  | 100% |  |
| 13 | 3.2 | Statement Manager | 15d | 2013-05-24 | 2013-06-13 | 7 |  | Björn Endres (SYSTOPIA) |
| 14 | 3.3 | Payment Manager | 10d | 2013-05-24 | 2013-06-06 | 7 |  | Björn Endres (SYSTOPIA) |
| 15 | 3.4 | Payment Importer | 15d | 2013-05-24 | 2013-06-13 | 8 |  | Björn Endres (SYSTOPIA) |
| 16 | 3.5 | Payment Exporter | 10d | 2013-05-24 | 2013-06-06 | 8 |  | Björn Endres (SYSTOPIA) |
| 17 | 3.6 | BankAccount Manager | 15d | 2013-05-28 | 2013-06-17 | 6 |  | Olaf Buddenhagen (SfE) |
| 18 | 3.7 | Matching engine | 10d | 2013-05-24 | 2013-06-06 | 7 |  | Björn Endres (SYSTOPIA) |
| 19 | 3.8 | Suggestion Workbench | 20d | 2013-05-24 | 2013-06-20 | 7, 10 |  | Björn Endres (SYSTOPIA) |
| 20 | 4 | **CiviSEPA** | 1d | 2013-05-24 | 2013-05-24 |  |  |  |
| 21 | 4.1 | mandate manager | 1d | 2013-05-24 | 2013-05-24 | 7, 8 |  | Olaf Buddenhagen (SfE) |
| 22 | 4.2 | Mandate Documenter | 1d | 2013-05-24 | 2013-05-24 | 8 |  | Olaf Buddenhagen (SfE) |
| 23 | 4.3 | SDD Payment Processor | 1d | 2013-05-24 | 2013-05-24 | 8 |  | Olaf Buddenhagen (SfE) |
| 24 | 4.4 | Mandate Import | 1d | 2013-05-24 | 2013-05-24 | 8 |  | Olaf Buddenhagen (SfE) |
| 25 | 4.5 | Batch Manager | 1d | 2013-05-24 | 2013-05-24 | 8 |  | Olaf Buddenhagen (SfE) |
| 26 | 4.6 | XML Exporter | 1d | 2013-05-24 | 2013-05-24 | 8 |  | Olaf Buddenhagen (SfE) |
| 27 | 5 | Code Sprint | 2d | 2013-05-28 | 2013-05-29 | 3, 5 |  |  |

Notes:
- 2: Beschreibung; siehe wiki

| ID | WBS | Task | Duration | Start | Finish | Complete |
| --- | --- | --- | --- | --- | --- | --- |
| 28 | 6 | **Definition Feature Requirements** | 17d | 2013-04-01 | 2013-04-23 | 100% |
| 29 | 6.1 | User Stories & required Features SYSTOPIA | 17d | 2013-04-01 | 2013-04-23 | 100% |
| 30 | 6.2 | User & required Features delius | 17d | 2013-04-01 | 2013-04-23 | 100% |
| 31 | 6.3 | User & required Features SfE | 17d | 2013-04-01 | 2013-04-23 | 100% |
